# caintegrator_project_plan_v3

Schedule from MS Project, 2011-08-01 to 2012-07-23, A marks actual dates.
NIH\NCI

## Calendars

- Standard: Mon-Fri 08:00-12:00, 13:00-17:00; Sat-Sun off. Exceptions (off unless hours are given): 2011-09-05.

## Resources

| Resource |
| --- |
| JP |
| TBH |
| SJ/JP |
| Qut |
| Quy |
| SJ |
| HS |
| Systems |
| MAX |
| system |
| Secuirity Team |
| Coung/Systems |

## Schedule

| ID | WBS | Task | Type | Duration | Start | Finish | Predecessors | Complete | Remaining | Total slack | Free slack | Constraint | Resources | Work | Actual work |
| --- | --- | --- | --- | --- | --- | --- | --- | --- | --- | --- | --- | --- | --- | --- | --- |
| 1 | 1 | **Adhoc Generic Support** |  | 16d | 2011-08-01 A | 2011-08-22 A |  | 100% |  |  |  |  |  |  |  |
| 2 | 1.1 | TCGA Data Support |  | 2d | 2011-08-01 A | 2011-08-02 A |  | 100% |  |  |  |  |  |  |  |
| 3 | 1.2 | TCGA Data on caIntegrator |  | 4d | 2011-08-17 A | 2011-08-22 A |  | 100% |  |  |  | start no earlier than 2011-08-17 |  |  |  |
| 4 | 1.3 | MATKC Support | milestone | 0d | 2011-08-01 A | 2011-08-01 A |  | 100% |  |  |  |  |  |  |  |
| 5 | 2 | **CaIntegrator Version 1.3.1** |  | 69d? | 2011-08-15 A | 2011-11-18 |  | 69% | 21.41d? | 176d |  |  |  | 640h | 473.09h |
| 6 | 2.1 | **JIRA CAINT-1011 508 Compliance** |  | 13d | 2011-08-15 A | 2011-08-31 A |  | 100% |  |  |  |  |  | 56h | 56h |
| 7 | 2.1.1 | Common Accenture Profile Dev/QA |  | 1d | 2011-08-15 A | 2011-08-15 A |  | 100% |  |  |  | start no earlier than 2011-08-15 | Quy | 8h | 8h |
| 8 | 2.1.2 | Identify 508 issues to be fixed and create JIRA user story tasks for each on DEV and QA. |  | 3d | 2011-08-22 A | 2011-08-24 A | 7 | 100% |  |  |  |  | JP | 24h | 24h |
| 9 | 2.1.3 | Fix TABLE tag in caBIO search form. |  | 0.5d | 2011-08-29 A | 2011-08-29 A | 8 | 100% |  |  |  |  | JP | 4h | 4h |
| 10 | 2.1.4 | Fix TABLE tag in gene list search form. |  | 0.5d | 2011-08-29 A | 2011-08-29 A | 9 | 100% |  |  |  |  | JP | 4h | 4h |
| 11 | 2.1.5 | Fix ALT tags in caBIO search form |  | 0.5d | 2011-08-30 A | 2011-08-30 A | 10 | 100% |  |  |  |  | JP | 4h | 4h |
| 12 | 2.1.6 | Fix ALT tags in study summary page |  | 0.5d | 2011-08-30 A | 2011-08-30 A | 11 | 100% |  |  |  |  | JP | 4h | 4h |
| 13 | 2.1.7 | Fix TABLE header in registeration page |  | 0.5d | 2011-08-31 A | 2011-08-31 A | 12 | 100% |  |  |  |  | JP | 4h | 4h |
| 14 | 2.1.8 | Fix TABLE in study summary page. |  | 0.5d | 2011-08-31 A | 2011-08-31 A | 13 | 100% |  |  |  |  | JP | 4h | 4h |
| 15 | 2.2 | **Ongoing maintenance and bug fixes** |  | 18d? | 2011-08-31 A | 2011-09-26 A |  | 100% |  |  |  |  |  | 64h | 64h |
| 16 | 2.2.1 | ADF platform issues |  | 2d | 2011-08-31 A | 2011-09-01 A |  | 100% |  |  |  | start no earlier than 2011-08-31 | JP | 16h | 16h |
| 17 | 2.2.2 | ECAT Prep |  | 2d | 2011-09-02 A | 2011-09-06 A | 16 | 100% |  |  |  |  | SJ; JP | 32h | 32h |
| 18 | 2.2.3 | prepare a point release for section 508 compliance. |  | 2d | 2011-09-19 A | 2011-09-20 A |  | 100% |  |  |  | start no earlier than 2011-09-19 | JP | 16h | 16h |
| 19 | 2.2.4 | Bug fix for typo error and new tag (RC2) |  | 1d? | 2011-09-26 A | 2011-09-26 A |  | 100% |  |  |  |  |  |  |  |
| 20 | 2.3 | QA RC1 |  | 7d | 2011-09-21 A | 2011-09-29 A | 18 | 100% |  |  |  |  | HS | 56h | 56h |
| 21 | 2.4 | **JIRA-CAINT-1047 - Resolve Appscan Issues** |  | 21d? | 2011-09-30 A | 2011-10-28 |  | 86% | 2.86d? | 0d |  |  | HS | 344h | 297.09h |
| 22 | 2.4.1 | Resolve existing medium issues |  | 2d | 2011-09-30 A | 2011-10-03 A | 20 | 100% |  |  |  |  | JP | 16h | 16h |
| 23 | 2.4.2 | Run Appscan |  | 1d | 2011-10-03 A | 2011-10-03 A |  | 100% |  |  |  | start no earlier than 2011-10-03 | Secuirity Team | 8h | 8h |
| 24 | 2.4.3 | Fix medium issues |  | 7d | 2011-10-04 A | 2011-10-12 A | 23 | 100% |  |  |  |  | JP | 56h | 56h |
| 25 | 2.4.4 | Run new Appscan to verify |  | 1d | 2011-10-13 A | 2011-10-13 A | 24 | 100% |  |  |  |  | JP | 8h | 8h |
| 26 | 2.4.5 | Fix all additional medium issues |  | 6d | 2011-10-14 A | 2011-10-21 A | 25 | 100% |  |  |  |  | JP | 48h | 48h |
| 27 | 2.4.6 | Run new Appscan to verify |  | 2d | 2011-10-24 A | 2011-10-25 A | 26 | 100% |  |  |  |  | Systems | 16h | 16h |
| 28 | 2.4.7 | Full Appscan to verify |  | 2d | 2011-10-26 | 2011-10-27 | 27 |  |  | 0d |  |  | Systems | 16h |  |
| 29 | 2.4.8 | New tag (RC3) for 1.3.1 |  | 1d? | 2011-10-28 | 2011-10-28 | 28 |  |  | 0d |  |  | JP | 8h |  |
| 30 | 2.5 | QA RC3 |  | 8d | 2011-10-31 | 2011-11-09 | 21 |  |  | 176d | 0d |  | HS | 64h |  |
| 31 | 2.6 | Release - Stage/QA/Prod/QA |  | 7d | 2011-11-10 | 2011-11-18 | 30 |  |  | 176d |  |  | Systems | 56h |  |

| ID | WBS | Task | Duration | Start | Finish | Predecessors | Complete | Remaining | Total slack | Free slack | Constraint | Resources | Work | Actual work |
| --- | --- | --- | --- | --- | --- | --- | --- | --- | --- | --- | --- | --- | --- | --- |
| 32 | 3 | **CaIntegrator Version 1.4** | 143d | 2011-08-01 A | 2012-02-16 |  | 14% | 122.45d | 112d |  |  |  | 928h | 148.4h |
| 33 | 3.1 | Version 1.4 planning/priortization | 2d | 2011-08-01 A | 2011-08-02 A |  | 100% |  |  |  |  |  |  |  |
| 34 | 3.2 | **JIRA CAINT-1015 Tech Stack Upgrade** | 78d | 2011-08-03 A | 2011-11-21 | 33 | 48% | 40.9d | 175d |  |  |  | 312h | 148.4h |
| 35 | 3.2.1 | Planning | 2d | 2011-08-03 A | 2011-08-04 A |  | 100% |  |  |  |  | JP | 16h | 16h |
| 36 | 3.2.2 | CI to Jenkins | 2d | 2011-09-07 A | 2011-09-08 A | 35, 54 | 100% |  |  |  |  | JP | 16h | 16h |
| 37 | 3.2.3 | ANT 1.8 | 3d | 2011-09-09 A | 2011-09-13 A | 36 | 100% |  |  |  |  | JP | 24h | 24h |
| 38 | 3.2.4 | Support for Version 1.3.1 RC1 | 2d | 2011-09-20 A | 2011-09-21 A | 18 | 100% |  |  |  |  | JP | 16h | 16h |
| 39 | 3.2.5 | JIRA CAINT-1055 Migration from nexus | 9d | 2011-10-06 A | 2011-10-18 | 37 | 95% | 0.45d | 199d |  |  | MAX | 72h | 68.4h |
| 40 | 3.2.6 | JIRA CAINT-1058 Implement Artifact Configuration | 5d | 2011-10-26 A | 2011-11-01 |  | 20% | 4d | 189d |  |  | MAX | 40h | 8h |
| 41 | 3.2.7 | JIRA CAINT-1015 Upgrade build for Anthill Pro 3, JBOSS upgrade | 16d | 2011-10-31 | 2011-11-21 | 38, 55, 21 |  |  | 0d |  |  | JP | 128h |  |
| 42 | 3.3 | **TRANSCEND Support** | 44d | 2011-08-01 | 2011-09-30 |  |  |  | 211d |  |  |  | 152h |  |
| 43 | 3.3.1 | Refine requirements | 5d | 2011-09-26 | 2011-09-30 |  |  |  | 211d |  | start no earlier than 2011-09-26 |  |  |  |
| 44 | 3.3.2 | JIRA CAINT-998 -Version control (create shell study) | 14d | 2011-08-01 | 2011-08-18 |  |  |  | 236d | 0d |  | MAX | 112h |  |
| 45 | 3.3.3 | JIRA CAINT-998 Version control (Archive) | 5d | 2011-08-19 | 2011-08-25 | 44 |  |  | 236d |  |  | MAX | 40h |  |
| 46 | 3.4 | **JIRA-CAINT-966 - Generic Platform Support** | 43d | 2011-11-22 | 2012-01-19 |  |  |  | 0d |  |  |  | 344h |  |
| 47 | 3.4.1 | Create new generic platform model by extending expression platform. | 8d | 2011-11-22 | 2011-12-01 | 41 |  |  | 0d |  |  | JP | 64h |  |
| 48 | 3.4.2 | Modify the generic platform loader to accept MAGE-TAB. | 5d | 2011-12-02 | 2011-12-08 | 47 |  |  | 0d |  |  | JP | 40h |  |
| 49 | 3.4.3 | Modify the study deployment process to load the new platform data from caArray. | 8d | 2011-12-09 | 2011-12-20 | 48 |  |  | 0d |  |  | JP | 64h |  |
| 50 | 3.4.4 | modify front-end analysis tools to show a new title according to platform type. | 3d | 2011-12-21 | 2011-12-23 | 49 |  |  | 0d |  |  | JP | 24h |  |
| 51 | 3.4.5 | Modify the Query interface to allow selection of a generic expression data type. | 14d | 2011-12-26 | 2012-01-12 | 50 |  |  | 0d |  |  | JP | 112h |  |
| 52 | 3.4.6 | Modify front-end for IGV and heatmap to display a selector for choosing a generic expression data type. | 5d | 2012-01-13 | 2012-01-19 | 51 |  |  | 0d |  |  | JP | 40h |  |
| 53 | 3.5 | **Ongoing maintenance and bug fixes** | 19d | 2011-08-31 | 2011-09-27 |  |  |  | 39d |  |  |  | 40h |  |
| 54 | 3.5.1 | ADF platform issues | 2d | 2011-08-31 | 2011-09-01 |  |  |  | 231d |  | start no earlier than 2011-08-31 | JP | 16h |  |
| 55 | 3.5.2 | Data issues with training tier | 3d | 2011-09-23 | 2011-09-27 |  |  |  | 23d |  | start no earlier than 2011-09-23 | JP | 24h |  |
| 56 | 3.6 | QA | 10d | 2012-01-20 | 2012-02-02 | 46 |  |  | 0d |  |  | HS | 80h |  |
| 57 | 3.7 | Documentation | 10d | 2012-01-20 | 2012-02-02 | 46 |  |  | 122d |  |  |  |  |  |
| 58 | 3.8 | Appscan/Stage/Prod release | 10d | 2012-02-03 | 2012-02-16 | 56 |  |  | 112d |  |  |  |  |  |

| ID | WBS | Task | Duration | Start | Finish | Predecessors | Total slack | Free slack | Resources | Work |
| --- | --- | --- | --- | --- | --- | --- | --- | --- | --- | --- |
| 59 | 4 | **CaIntegrator Version 1.5** | 255d? | 2011-08-01 | 2012-07-23 |  | 0d |  |  | 1280h |
| 60 | 4.1 | Version 1.5 planning/priortization | 2d | 2012-02-03 | 2012-02-06 | 56 | 0d |  |  |  |
| 61 | 4.2 | **TRANSCEND Support** | 215d? | 2011-08-01 | 2012-05-28 |  | 40d |  |  | 1120h |
| 62 | 4.2.1 | JIRA CAINT-998 - TRANSCEND Permissions Support | 40d | 2012-02-07 | 2012-04-02 | 60 | 0d |  | JP | 320h |
| 63 | 4.2.2 | JIRA CAINT-998 Automatic Refresh | 40d | 2012-02-07 | 2012-04-02 | 60 | 60d | 0d | TBH | 320h |
| 64 | 4.2.3 | JIRA CAINT-998 Single Sign-on | 40d | 2012-04-03 | 2012-05-28 | 62 | 0d |  | TBH | 320h |
| 65 | 4.2.4 | JIRA CAINT-49 Integrate with private studies in NBIA | 20d | 2012-04-03 | 2012-04-30 | 63 | 60d |  | JP | 160h |
| 66 | 4.2.5 | JIRA CAINT-1045 Performance Requirements | 1d? | 2011-08-01 | 2011-08-01 |  | 254d |  |  |  |
| 67 | 4.3 | JIRA CAINT-1041 - Support NCI Funded Studies Deployment | 20d | 2012-05-29 | 2012-06-25 | 64 | 0d |  | TBH | 160h |
| 68 | 4.4 | QA | 20d | 2012-06-26 | 2012-07-23 | 67 | 0d |  |  |  |
| 69 | 4.5 | Documentation | 10d | 2012-06-26 | 2012-07-09 | 67 | 0d |  |  |  |
| 70 | 4.6 | Appscan/Stage/Prod release | 10d | 2012-07-10 | 2012-07-23 | 69 | 0d |  |  |  |
